# LR3_3

Schedule from MS Project, 2023-03-01 to 2023-07-31, costs in ₽.
Команда разработчиков из 16 человек занимается созданием карты / города на основе собственного модуля отображения. Проект должен быть завершен в течение / 6 месяцев. Бюджет проекта: 50 000 рубле
Команда разработчиков из 16 человек занимается созданием карты / города на основе собственного модуля отображения. Проект должен быть завершен в течение / 6 месяцев. Бюджет проекта: 50 000 рублей

## Calendars

- Стандартный: Mon-Fri 09:00-13:00, 14:00-18:00; Sat-Sun off.

## Resources

| Resource | Group | Rate | Cost per use |
| --- | --- | --- | --- |
| Ведущий программист | Программирование | 10 | 100 |
| Программист#1 | Программирование | 7 | 50 |
| Программист#2 | Программирование | 7 | 50 |
| Программист#3 | Программирование | 7 | 50 |
| Программист#4 | Программирование | 7 | 50 |
| Системный аналитик | Анализ | 20 | 300 |
| Художник-дизайнер | Дизайн | 8 | 70 |
| Технический писатель | Документация | 5 | 20 |
| Web-дизайнер | Internet | 7 | 50 |
| 3D аниматор | Дизайн | 8 | 70 |
| Мультимедиа-корреспондент | М-медия | 3 | 20 |
| Наборщик данных #1 | Ввод данных | 2 | 10 |
| Наборщик данных #2 | Ввод данных | 2 | 10 |
| Наборщик данных #3 | Ввод данных | 2 | 10 |
| Наборщик данных #4 | Ввод данных | 2 | 10 |
| Наборщик данных #5 | Ввод данных | 2 | 10 |
| Дополнительный сервер |  | 2 |  |
| Программист#5 | Программирование | 7 | 50 |
| <New Resource 1> | Программирование | 7 | 50 |

## Schedule

| ID | WBS | Task | Type | Duration | Start | Finish | Predecessors | Baseline start | Baseline finish | Baseline duration | Total slack | Free slack | Constraint | Resources | Work | Cost | Baseline cost |
| --- | --- | --- | --- | --- | --- | --- | --- | --- | --- | --- | --- | --- | --- | --- | --- | --- | --- |
| 1 | 1 | Начало проекта | milestone | 0w | 2023-03-01 09:00 | 2023-03-01 09:00 |  | 2021-03-01 09:00 | 2021-03-01 09:00 | 0w | 53.92d | 0d |  |  |  |  |  |
| 2 | 2 | **Создание интерфейса** |  | 14.04w | 2023-03-01 09:00 | 2023-06-07 10:25 | 1 | 2021-03-01 09:00 | 2021-06-24 15:44 | 15.94w | 24.1d | 0d |  |  | 553h | 5,594 | 5,650 |
| 3 | 2.1 | **Разработка дизайна интерфейса** |  | 4.92w | 2023-03-01 09:00 | 2023-04-04 15:00 |  | 2021-03-01 09:00 | 2021-04-06 15:00 | 5.12w | 53.77d | 0d |  |  | 313h | 2,714 | 2,770 |
| 4 | 2.1.1 | Разработка 2D графических элементов |  | 3w | 2023-03-01 09:00 | 2023-03-22 12:00 |  | 2021-03-01 09:00 | 2021-03-23 12:00 | 3w | 53.92d | 0d |  | Художник-дизайнер | 120h | 1,030 | 1,030 |
| 5 | 2.1.2 | Разработка 3D графических элементов |  | 1.82w | 2023-03-01 09:00 | 2023-03-14 11:00 | 4SS | 2021-03-01 09:00 | 2021-03-16 11:00 | 2w | 53.92d | 0d |  | 3D аниматор | 73h | 654 | 710 |
| 6 | 2.1.3 | Создание заставки |  | 3w | 2023-03-14 11:00 | 2023-04-04 15:00 | 5 | 2021-03-16 11:00 | 2021-04-06 15:00 | 3w | 53.77d | 0d |  | 3D аниматор | 120h | 1,030 | 1,030 |
| 7 | 2.2 | Программирование интерфейса |  | 1.5w | 2023-05-26 15:25 | 2023-06-07 10:25 | 3, 12 | 2021-06-15 10:44 | 2021-06-24 15:44 | 1.5w | 24.1d | 0d |  | Программист#3; Программист#4; Программист#1; Программист#2 | 240h | 1,880 | 1,880 |
| 8 | 3 | **Построение базы объектов** |  | 16.04w | 2023-03-23 14:00 | 2023-07-13 15:26 |  | 2021-03-23 14:00 | 2021-07-16 15:25 | 16.04w | 11.85d | 0d |  | Дополнительный сервер | 2765.44h | 9,473.58 | 15,152.85 |
| 9 | 3.1 | Анализ и построение структуры базы объектов |  | 1.98w | 2023-03-23 14:00 | 2023-04-06 12:12 |  | 2021-03-23 14:00 | 2021-04-06 15:00 | 2w | 13.17d | 0d |  | Системный аналитик; Программист#1 | 79h | 1,416.5 | 1,900 |
| 10 | 3.2 | Программирование средств обработки базы объектов |  | 1.79w | 2023-04-07 14:00 | 2023-04-20 12:36 | 9 | 2021-04-07 15:49 | 2021-04-20 15:25 | 1.79w | 12.07d | 0d |  | Программист#3; Программист#4; Программист#1; Программист#2 | 286.44h | 2,205.08 | 1,880 |
| 11 | 3.3 | Наполнение базы объектов |  | 12w | 2023-04-20 15:26 | 2023-07-13 15:26 | 10 | 2021-04-20 15:25 | 2021-07-16 15:25 | 12w | 11.85d | 0d | start no earlier than 2023-04-20 15:26 | Наборщик данных #1; Наборщик данных #2; Наборщик данных #3; Наборщик данных #4; Наборщик данных #5 | 2400h | 4,850 | 4,850 |
| 12 | 4 | **Создание ядра GIS** |  | 12.54w | 2023-03-01 09:00 | 2023-05-26 15:25 |  | 2021-03-01 09:00 | 2021-06-15 10:44 | 14.44w | 24.1d | 0d |  |  | 2869.79h | 24,513.81 | 17,148.62 |
| 13 | 4.1 | Анализ и проектирование ядра |  | 1w | 2023-03-01 09:00 | 2023-03-08 10:00 |  | 2021-03-01 09:00 | 2021-03-09 10:00 | 1w | 24.22d | 0d |  | Ведущий программист; Системный аналитик; Программист#1; Программист#2; Программист#3; Программист#4 | 240h | 2,920 | 2,920 |
| 14 | 4.2 | Создание модели ядра |  | 2.02w | 2023-03-08 10:00 | 2023-03-22 10:49 | 13 | 2021-03-09 10:00 | 2021-03-23 10:49 | 2.02w | 24.22d | 0d |  | Ведущий программист; Программист#1; Программист#2; Программист#3; Программист#4 | 404.09h | 3,371.1 | 3,336.46 |
| 15 | 4.3 | Тестирование модели ядра |  | 0.25w | 2023-03-22 10:49 | 2023-03-23 12:49 | 14 | 2021-03-23 10:49 | 2021-03-24 12:49 | 0.25w | 24.22d | 0d |  | Программист#1; Программист#2; Программист#3; Программист#4 | 40h | 480 | 480 |
| 16 | 4.4 | Создание рабочей версии ядра |  | 9.19w | 2023-03-23 12:49 | 2023-05-26 15:25 | 15 | 2021-03-24 12:49 | 2021-06-15 10:44 | 11.1w | 24.1d | 0d |  | Ведущий программист; Программист#1; Программист#2; Программист#3; Программист#4; Программист#5 | 2185.7h | 16,742.71 | 9,412.16 |
| 17 | 5 | Создание мультимедиа – наполнения |  | 6w | 2023-04-04 15:00 | 2023-05-17 11:00 | 3 | 2021-04-06 15:00 | 2021-05-21 11:00 | 6w | 53.27d | 0d |  | Мультимедиа-корреспондент | 240h | 740 | 740 |
| 18 | 6 | Создание справочной системы |  | 1.9w | 2023-07-17 09:00 | 2023-07-28 15:00 | 7 | 2021-07-06 09:44 | 2021-07-20 11:44 | 2w | 0.9d | 0d | finish no earlier than 2023-07-17 15:12 | Программист#1; Технический писатель | 72.8h | 506.17 | 420 |
| 19 | 7 | **Создание руководства пользователя** |  | 3.2w | 2023-05-24 10:25 | 2023-06-15 10:25 | 7FS-10d | 2021-06-09 15:44 | 2021-07-06 09:44 | 3.48w | 24.1d | 0d |  |  | 151h | 925 | 1,010 |
| 20 | 7.1 | Разработка дизайна руководства |  | 0.5w | 2023-05-24 10:25 | 2023-05-26 15:25 |  | 2021-06-09 15:44 | 2021-06-17 15:44 | 1w | 24.1d | 0d |  | Художник-дизайнер; Технический писатель | 40h | 350 | 390 |
| 21 | 7.2 | Написание руководства пользователя |  | 2.77w | 2023-05-26 10:25 | 2023-06-15 10:25 | 20SS+2d | 2021-06-11 15:44 | 2021-07-06 09:44 | 3w | 24.1d | 0d |  | Технический писатель | 111h | 575 | 620 |
| 22 | 8 | **Создание web – сайта и поддержка** |  | 3.15w | 2023-05-26 10:25 | 2023-06-16 17:25 |  | 2021-06-11 15:44 | 2021-07-16 11:44 | 4.72w | 23.97d | 0d |  |  | 298h | 1,988 | 2,106 |
| 23 | 8.1 | Разработка структуры сайта |  | 1d | 2023-05-26 10:25 | 2023-05-29 10:25 | 21SS | 2021-06-11 15:44 | 2021-06-15 15:44 | 1d | 24.1d | 0d |  | Web-дизайнер | 8h | 106 | 106 |
| 24 | 8.2 | Разработка дизайна сайта |  | 1.45w | 2023-05-29 10:25 | 2023-06-07 12:25 | 23 | 2021-06-15 15:44 | 2021-06-24 17:44 | 1.45w | 24.1d | 0d |  | Web-дизайнер; Художник-дизайнер; Технический писатель | 174h | 1,300 | 1,110 |
| 25 | 8.3 | Наполнение сайта |  | 1.45w | 2023-06-07 12:25 | 2023-06-16 17:25 | 24 | 2021-06-24 17:44 | 2021-07-16 11:44 | 3w | 23.97d | 0d |  | Web-дизайнер; Наборщик данных #1 | 116h | 582 | 890 |
| 26 | 9 | Тестирование сайта |  | 2.35w | 2023-07-13 16:12 | 2023-07-31 14:12 | 22FS-1w | 2021-07-09 11:44 | 2021-07-27 14:01 | 2.43w | 0d |  | start no earlier than 2023-07-13 16:12 | Программист#1; Программист#2; Программист#3; Программист#4 | 486.43h | 3,604.98 | 3,945.85 |
| 27 | 10 | Сдача сайта в эксплуатацию | milestone | 0w | 2023-07-31 14:12 | 2023-07-31 14:12 | 26 | 2021-07-27 14:01 | 2021-07-27 14:01 | 0w | 0d |  |  |  |  |  |  |

| ID | WBS | Task | Type | Duration | Start | Finish | Total slack | Resources | Work | Cost |
| --- | --- | --- | --- | --- | --- | --- | --- | --- | --- | --- |
| 28 | 11 | **Совещание** |  | 21.02w | 2023-03-01 09:00 | 2023-07-26 10:00 | 0d |  | 154h | 1,342 |
| 29 | 11.1 | Совещание 1 | manual | 1h | 2023-03-01 09:00 | 2023-03-01 10:00 |  | 3D аниматор; Web-дизайнер; Ведущий программист; Мультимедиа-корреспондент; Системный аналитик; Технический писатель; Художник-дизайнер | 7h | 61 |
| 30 | 11.2 | Совещание 2 | manual | 1h | 2023-03-08 09:00 | 2023-03-08 10:00 |  | 3D аниматор; Web-дизайнер; Ведущий программист; Мультимедиа-корреспондент; Системный аналитик; Технический писатель; Художник-дизайнер | 7h | 61 |
| 31 | 11.3 | Совещание 3 | manual | 1h | 2023-03-15 09:00 | 2023-03-15 10:00 |  | 3D аниматор; Web-дизайнер; Ведущий программист; Мультимедиа-корреспондент; Системный аналитик; Технический писатель; Художник-дизайнер | 7h | 61 |
| 32 | 11.4 | Совещание 4 | manual | 1h | 2023-03-22 09:00 | 2023-03-22 10:00 |  | 3D аниматор; Web-дизайнер; Ведущий программист; Мультимедиа-корреспондент; Системный аналитик; Технический писатель; Художник-дизайнер | 7h | 61 |
| 33 | 11.5 | Совещание 5 | manual | 1h | 2023-03-29 09:00 | 2023-03-29 10:00 |  | 3D аниматор; Web-дизайнер; Ведущий программист; Мультимедиа-корреспондент; Системный аналитик; Технический писатель; Художник-дизайнер | 7h | 61 |
| 34 | 11.6 | Совещание 6 | manual | 1h | 2023-04-05 09:00 | 2023-04-05 10:00 |  | 3D аниматор; Web-дизайнер; Ведущий программист; Мультимедиа-корреспондент; Системный аналитик; Технический писатель; Художник-дизайнер | 7h | 61 |
| 35 | 11.7 | Совещание 7 | manual | 1h | 2023-04-12 09:00 | 2023-04-12 10:00 |  | 3D аниматор; Web-дизайнер; Ведущий программист; Мультимедиа-корреспондент; Системный аналитик; Технический писатель; Художник-дизайнер | 7h | 61 |
| 36 | 11.8 | Совещание 8 | manual | 1h | 2023-04-19 09:00 | 2023-04-19 10:00 |  | 3D аниматор; Web-дизайнер; Ведущий программист; Мультимедиа-корреспондент; Системный аналитик; Технический писатель; Художник-дизайнер | 7h | 61 |
| 37 | 11.9 | Совещание 9 | manual | 1h | 2023-04-26 09:00 | 2023-04-26 10:00 |  | 3D аниматор; Web-дизайнер; Ведущий программист; Мультимедиа-корреспондент; Системный аналитик; Технический писатель; Художник-дизайнер | 7h | 61 |
| 38 | 11.10 | Совещание 10 | manual | 1h | 2023-05-03 09:00 | 2023-05-03 10:00 |  | 3D аниматор; Web-дизайнер; Ведущий программист; Мультимедиа-корреспондент; Системный аналитик; Технический писатель; Художник-дизайнер | 7h | 61 |
| 39 | 11.11 | Совещание 11 | manual | 1h | 2023-05-10 09:00 | 2023-05-10 10:00 |  | 3D аниматор; Web-дизайнер; Ведущий программист; Мультимедиа-корреспондент; Системный аналитик; Технический писатель; Художник-дизайнер | 7h | 61 |
| 40 | 11.12 | Совещание 12 | manual | 1h | 2023-05-17 09:00 | 2023-05-17 10:00 |  | 3D аниматор; Web-дизайнер; Ведущий программист; Мультимедиа-корреспондент; Системный аналитик; Технический писатель; Художник-дизайнер | 7h | 61 |
| 41 | 11.13 | Совещание 13 | manual | 1h | 2023-05-24 09:00 | 2023-05-24 10:00 |  | 3D аниматор; Web-дизайнер; Ведущий программист; Мультимедиа-корреспондент; Системный аналитик; Технический писатель; Художник-дизайнер | 7h | 61 |
| 42 | 11.14 | Совещание 14 | manual | 1h | 2023-05-31 09:00 | 2023-05-31 10:00 |  | 3D аниматор; Web-дизайнер; Ведущий программист; Мультимедиа-корреспондент; Системный аналитик; Технический писатель; Художник-дизайнер | 7h | 61 |
| 43 | 11.15 | Совещание 15 | manual | 1h | 2023-06-07 09:00 | 2023-06-07 10:00 |  | 3D аниматор; Web-дизайнер; Ведущий программист; Мультимедиа-корреспондент; Системный аналитик; Технический писатель; Художник-дизайнер | 7h | 61 |
| 44 | 11.16 | Совещание 16 | manual | 1h | 2023-06-14 09:00 | 2023-06-14 10:00 |  | 3D аниматор; Web-дизайнер; Ведущий программист; Мультимедиа-корреспондент; Системный аналитик; Технический писатель; Художник-дизайнер | 7h | 61 |
| 45 | 11.17 | Совещание 17 | manual | 1h | 2023-06-21 09:00 | 2023-06-21 10:00 |  | 3D аниматор; Web-дизайнер; Ведущий программист; Мультимедиа-корреспондент; Системный аналитик; Технический писатель; Художник-дизайнер | 7h | 61 |
| 46 | 11.18 | Совещание 18 | manual | 1h | 2023-06-28 09:00 | 2023-06-28 10:00 |  | 3D аниматор; Web-дизайнер; Ведущий программист; Мультимедиа-корреспондент; Системный аналитик; Технический писатель; Художник-дизайнер | 7h | 61 |
| 47 | 11.19 | Совещание 19 | manual | 1h | 2023-07-05 09:00 | 2023-07-05 10:00 |  | 3D аниматор; Web-дизайнер; Ведущий программист; Мультимедиа-корреспондент; Системный аналитик; Технический писатель; Художник-дизайнер | 7h | 61 |
| 48 | 11.20 | Совещание 20 | manual | 1h | 2023-07-12 09:00 | 2023-07-12 10:00 |  | 3D аниматор; Web-дизайнер; Ведущий программист; Мультимедиа-корреспондент; Системный аналитик; Технический писатель; Художник-дизайнер | 7h | 61 |
| 49 | 11.21 | Совещание 21 | manual | 1h | 2023-07-19 09:00 | 2023-07-19 10:00 |  | 3D аниматор; Web-дизайнер; Ведущий программист; Мультимедиа-корреспондент; Системный аналитик; Технический писатель; Художник-дизайнер | 7h | 61 |
| 50 | 11.22 | Совещание 22 | manual | 1h | 2023-07-26 09:00 | 2023-07-26 10:00 |  | 3D аниматор; Web-дизайнер; Ведущий программист; Мультимедиа-корреспондент; Системный аналитик; Технический писатель; Художник-дизайнер | 7h | 61 |
