# LR3_2

Schedule from MS Project, 2023-03-01 to 2023-09-22, costs in ₽.
Команда разработчиков из 16 человек занимается созданием карты / города на основе собственного модуля отображения. Проект должен быть завершен в течение / 6 месяцев. Бюджет проекта: 50 000 рубле
Команда разработчиков из 16 человек занимается созданием карты / города на основе собственного модуля отображения. Проект должен быть завершен в течение / 6 месяцев. Бюджет проекта: 50 000 рублей

## Calendars

- Стандартный: Mon-Fri 09:00-13:00, 14:00-18:00; Sat-Sun off. Exceptions (off unless hours are given): 2023-03-08 (Международный женский день), 2023-04-29 to 2023-05-01 (День труда), 2023-05-06 to 2023-05-09 (День победы), 2023-06-10 to 2023-06-12 (День России).

## Resources

| Resource | Group | Rate | Cost per use |
| --- | --- | --- | --- |
| Ведущий программист | Программирование | 10 |  |
| Программист#1 | Программирование | 7 | 50 |
| Программист#2 | Программирование | 7 | 50 |
| Программист#3 | Программирование | 7 | 50 |
| Программист#4 | Программирование | 7 | 50 |
| Системный аналитик | Анализ | 20 |  |
| Художник-дизайнер | Дизайн | 8 |  |
| Технический писатель | Документация | 5 |  |
| Web-дизайнер | Internet | 7 |  |
| 3D аниматор | Дизайн | 8 |  |
| Мультимедиа-корреспондент | М-медия | 3 |  |
| Наборщик данных #1 | Ввод данных | 2 | 10 |
| Наборщик данных #2 | Ввод данных | 2 | 10 |
| Наборщик данных #3 | Ввод данных | 2 | 10 |
| Наборщик данных #4 | Ввод данных | 2 | 10 |
| Наборщик данных #5 | Ввод данных | 2 | 10 |
| Дополнительный сервер |  | 2 |  |

## Schedule

| ID | WBS | Task | Type | Duration | Start | Finish | Predecessors | Total slack | Free slack | Resources | Work | Cost |
| --- | --- | --- | --- | --- | --- | --- | --- | --- | --- | --- | --- | --- |
| 1 | 1 | Начало проекта | milestone | 0w | 2023-03-01 09:00 | 2023-03-01 09:00 |  | 72d | 0d |  |  |  |
| 2 | 2 | **Создание интерфейса** |  | 22.45w | 2023-03-01 09:00 | 2023-08-11 11:00 | 1 | 0.12d | 0d |  | 560h | 5,340 |
| 3 | 2.1 | **Разработка дизайна интерфейса** |  | 5.12w | 2023-03-01 09:00 | 2023-04-06 15:00 |  | 71.75d | 0d |  | 320h | 2,560 |
| 4 | 2.1.1 | Разработка 2D графических элементов |  | 3w | 2023-03-01 09:00 | 2023-03-23 12:00 |  | 72d | 0d | Художник-дизайнер | 120h | 960 |
| 5 | 2.1.2 | Разработка 3D графических элементов |  | 2w | 2023-03-01 09:00 | 2023-03-16 11:00 | 4SS | 71.88d | 0d | 3D аниматор | 80h | 640 |
| 6 | 2.1.3 | Создание заставки |  | 3w | 2023-03-16 11:00 | 2023-04-06 15:00 | 5 | 71.75d | 0d | 3D аниматор | 120h | 960 |
| 7 | 2.2 | Программирование интерфейса |  | 3w | 2023-07-21 11:00 | 2023-08-11 11:00 | 3, 12 | 0.12d | 0d | Программист#3; Программист#4 | 240h | 1,780 |
| 8 | 3 | **Построение базы объектов** |  | 17.02w | 2023-03-23 14:00 | 2023-07-26 15:00 |  | 42.38d | 0d | Дополнительный сервер | 2720h | 9,232 |
| 9 | 3.1 | Анализ и построение структуры базы объектов |  | 2w | 2023-03-23 14:00 | 2023-04-06 15:00 |  | 42.38d | 0d | Системный аналитик | 80h | 1,600 |
| 10 | 3.2 | Программирование средств обработки базы объектов |  | 3w | 2023-04-06 15:00 | 2023-04-27 15:00 | 9 | 42.38d | 0d | Программист#3; Программист#4 | 240h | 1,780 |
| 11 | 3.3 | Наполнение базы объектов |  | 12w | 2023-04-27 15:00 | 2023-07-26 15:00 | 10 | 42.38d | 0d | Наборщик данных #1; Наборщик данных #2; Наборщик данных #3; Наборщик данных #4; Наборщик данных #5 | 2400h | 4,850 |
| 12 | 4 | **Создание ядра GIS** |  | 19.45w | 2023-03-01 09:00 | 2023-07-21 11:00 |  | 0.12d | 0d |  | 1920h | 18,405 |
| 13 | 4.1 | Анализ и проектирование ядра |  | 3w | 2023-03-01 09:00 | 2023-03-23 12:00 |  | 0.12d | 0d | Ведущий программист; Системный аналитик | 240h | 3,600 |
| 14 | 4.2 | Создание модели ядра |  | 5.12w | 2023-03-23 12:00 | 2023-04-27 18:00 | 13 | 0.12d | 0d | Ведущий программист; Программист#1 | 410h | 3,535 |
| 15 | 4.3 | Тестирование модели ядра |  | 1w | 2023-04-28 09:00 | 2023-05-05 18:00 | 14 | 0.12d | 0d | Программист#1 | 40h | 330 |
| 16 | 4.4 | Создание рабочей версии ядра |  | 10.25w | 2023-05-10 09:00 | 2023-07-21 11:00 | 15 | 0.12d | 0d | Ведущий программист; Программист#1; Программист#2 | 1230h | 9,940 |
| 17 | 5 | Создание мультимедиа – наполнения |  | 6w | 2023-04-06 15:00 | 2023-05-24 11:00 | 3 | 86.75d | 0d | Мультимедиа-корреспондент | 240h | 720 |
| 18 | 6 | Создание справочной системы |  | 2w | 2023-08-22 12:00 | 2023-09-05 13:00 | 7 | 13.5d | 0d | Технический писатель | 79h | 395 |
| 19 | 7 | **Создание руководства пользователя** |  | 3.45w | 2023-07-28 11:00 | 2023-08-22 13:00 | 7FS-10d | 0.12d | 0d |  | 160h | 920 |
| 20 | 7.1 | Разработка дизайна руководства |  | 1w | 2023-07-28 11:00 | 2023-08-04 11:00 |  | 0.12d | 0d | Художник-дизайнер | 40h | 320 |
| 21 | 7.2 | Написание руководства пользователя |  | 3w | 2023-08-01 11:00 | 2023-08-22 13:00 | 20SS+2d | 0.12d | 0d | Технический писатель | 120h | 600 |
| 22 | 8 | **Создание web – сайта и поддержка** |  | 4.67w | 2023-08-01 11:00 | 2023-09-01 15:00 |  | 0d |  |  | 299h | 2,207 |
| 23 | 8.1 | Разработка структуры сайта |  | 1d | 2023-08-01 11:00 | 2023-08-02 11:00 | 21SS | 0.12d | 0d | Web-дизайнер | 8h | 56 |
| 24 | 8.2 | Разработка дизайна сайта |  | 1.43w | 2023-08-02 11:00 | 2023-08-11 12:00 | 23 | 0.12d | 0d | 3D аниматор; Web-дизайнер; Художник-дизайнер | 171h | 1,311 |
| 25 | 8.3 | Наполнение сайта |  | 3w | 2023-08-11 12:00 | 2023-09-01 15:00 | 24 | 0d |  | Web-дизайнер | 120h | 840 |
| 26 | 9 | Тестирование сайта |  | 4.08w | 2023-08-25 15:00 | 2023-09-22 18:00 | 22FS-1w | 0d |  | Ведущий программист; Программист#1; Программист#2 | 489h | 4,012 |

| ID | WBS | Task | Type | Duration | Start | Finish | Predecessors | Total slack | Resources | Work | Cost |
| --- | --- | --- | --- | --- | --- | --- | --- | --- | --- | --- | --- |
| 27 | 10 | **Сдача сайта в эксплуатацию** |  | 27.02w | 2023-03-01 09:00 | 2023-09-13 10:00 | 26 | 0d |  | 203h | 1,769 |
| 28 | 10.1 | **Совещание** |  | 27.02w | 2023-03-01 09:00 | 2023-09-13 10:00 |  | 0d |  | 203h | 1,769 |
| 29 | 10.1.1 | Совещание 1 | manual | 1h | 2023-03-01 09:00 | 2023-03-01 10:00 |  |  | 3D аниматор; Web-дизайнер; Ведущий программист; Мультимедиа-корреспондент; Системный аналитик; Технический писатель; Художник-дизайнер | 7h | 61 |
| 30 | 10.1.2 | Совещание 2 | manual | 1h | 2023-03-08 09:00 | 2023-03-09 10:00 |  |  | 3D аниматор; Web-дизайнер; Ведущий программист; Мультимедиа-корреспондент; Системный аналитик; Технический писатель; Художник-дизайнер | 7h | 61 |
| 31 | 10.1.3 | Совещание 3 | manual | 1h | 2023-03-15 09:00 | 2023-03-15 10:00 |  |  | 3D аниматор; Web-дизайнер; Ведущий программист; Мультимедиа-корреспондент; Системный аналитик; Технический писатель; Художник-дизайнер | 7h | 61 |
| 32 | 10.1.4 | Совещание 4 | manual | 1h | 2023-03-22 09:00 | 2023-03-22 10:00 |  |  | 3D аниматор; Web-дизайнер; Мультимедиа-корреспондент; Системный аналитик; Технический писатель; Художник-дизайнер; Ведущий программист | 7h | 61 |
| 33 | 10.1.5 | Совещание 5 | manual | 1h | 2023-03-29 09:00 | 2023-03-29 10:00 |  |  | Web-дизайнер; Мультимедиа-корреспондент; Ведущий программист; 3D аниматор; Системный аналитик; Технический писатель; Художник-дизайнер | 7h | 61 |
| 34 | 10.1.6 | Совещание 6 | manual | 1h | 2023-04-05 09:00 | 2023-04-05 10:00 |  |  | 3D аниматор; Web-дизайнер; Мультимедиа-корреспондент; Ведущий программист; Системный аналитик; Технический писатель; Художник-дизайнер | 7h | 61 |
| 35 | 10.1.7 | Совещание 7 | manual | 1h | 2023-04-12 09:00 | 2023-04-12 10:00 |  |  | 3D аниматор; Web-дизайнер; Мультимедиа-корреспондент; Ведущий программист; Системный аналитик; Технический писатель; Художник-дизайнер | 7h | 61 |
| 36 | 10.1.8 | Совещание 8 | manual | 1h | 2023-04-19 09:00 | 2023-04-19 10:00 |  |  | 3D аниматор; Web-дизайнер; Мультимедиа-корреспондент; Ведущий программист; Художник-дизайнер; Системный аналитик; Технический писатель | 7h | 61 |
| 37 | 10.1.9 | Совещание 9 | manual | 1h | 2023-04-26 09:00 | 2023-04-26 10:00 |  |  | Web-дизайнер; 3D аниматор; Ведущий программист; Мультимедиа-корреспондент; Художник-дизайнер; Системный аналитик; Технический писатель | 7h | 61 |
| 38 | 10.1.10 | Совещание 10 | manual | 1h | 2023-05-03 09:00 | 2023-05-03 10:00 |  |  | Web-дизайнер; 3D аниматор; Ведущий программист; Мультимедиа-корреспондент; Технический писатель; Системный аналитик; Художник-дизайнер | 7h | 61 |
| 39 | 10.1.11 | Совещание 11 | manual | 1h | 2023-05-10 09:00 | 2023-05-10 10:00 |  |  | 3D аниматор; Web-дизайнер; Ведущий программист; Мультимедиа-корреспондент; Системный аналитик; Технический писатель; Художник-дизайнер | 7h | 61 |
| 40 | 10.1.12 | Совещание 12 | manual | 1h | 2023-05-17 09:00 | 2023-05-17 10:00 |  |  | Web-дизайнер; 3D аниматор; Ведущий программист; Художник-дизайнер; Системный аналитик; Технический писатель; Мультимедиа-корреспондент | 7h | 61 |
| 41 | 10.1.13 | Совещание 13 | manual | 1h | 2023-05-24 09:00 | 2023-05-24 10:00 |  |  | 3D аниматор; Web-дизайнер; Ведущий программист; Системный аналитик; Технический писатель; Художник-дизайнер; Мультимедиа-корреспондент | 7h | 61 |
| 42 | 10.1.14 | Совещание 14 | manual | 1h | 2023-05-31 09:00 | 2023-05-31 10:00 |  |  | Web-дизайнер; 3D аниматор; Ведущий программист; Художник-дизайнер; Мультимедиа-корреспондент; Системный аналитик; Технический писатель | 7h | 61 |
| 43 | 10.1.15 | Совещание 15 | manual | 1h | 2023-06-07 09:00 | 2023-06-07 10:00 |  |  | Web-дизайнер; 3D аниматор; Технический писатель; Ведущий программист; Мультимедиа-корреспондент; Художник-дизайнер; Системный аналитик | 7h | 61 |
| 44 | 10.1.16 | Совещание 16 | manual | 1h | 2023-06-14 09:00 | 2023-06-14 10:00 |  |  | 3D аниматор; Web-дизайнер; Системный аналитик; Художник-дизайнер; Мультимедиа-корреспондент; Ведущий программист; Технический писатель | 7h | 61 |
| 45 | 10.1.17 | Совещание 17 | manual | 1h | 2023-06-21 09:00 | 2023-06-21 10:00 |  |  | Web-дизайнер; 3D аниматор; Технический писатель; Ведущий программист; Мультимедиа-корреспондент; Художник-дизайнер; Системный аналитик | 7h | 61 |
| 46 | 10.1.18 | Совещание 18 | manual | 1h | 2023-06-28 09:00 | 2023-06-28 10:00 |  |  | Web-дизайнер; 3D аниматор; Технический писатель; Системный аналитик; Художник-дизайнер; Мультимедиа-корреспондент; Ведущий программист | 7h | 61 |
| 47 | 10.1.19 | Совещание 19 | manual | 1h | 2023-07-05 09:00 | 2023-07-05 10:00 |  |  | Web-дизайнер; 3D аниматор; Мультимедиа-корреспондент; Ведущий программист; Системный аналитик; Художник-дизайнер; Технический писатель | 7h | 61 |
| 48 | 10.1.20 | Совещание 20 | manual | 1h | 2023-07-12 09:00 | 2023-07-12 10:00 |  |  | Технический писатель; 3D аниматор; Web-дизайнер; Ведущий программист; Системный аналитик; Мультимедиа-корреспондент; Художник-дизайнер | 7h | 61 |
| 49 | 10.1.21 | Совещание 21 | manual | 1h | 2023-07-19 09:00 | 2023-07-19 10:00 |  |  | 3D аниматор; Web-дизайнер; Ведущий программист; Мультимедиа-корреспондент; Системный аналитик; Технический писатель; Художник-дизайнер | 7h | 61 |
| 50 | 10.1.22 | Совещание 22 | manual | 1h | 2023-07-26 09:00 | 2023-07-26 10:00 |  |  | Web-дизайнер; 3D аниматор; Системный аналитик; Технический писатель; Мультимедиа-корреспондент; Художник-дизайнер; Ведущий программист | 7h | 61 |
| 51 | 10.1.23 | Совещание 23 | manual | 1h | 2023-08-02 09:00 | 2023-08-02 10:00 |  |  | Web-дизайнер; 3D аниматор; Ведущий программист; Системный аналитик; Технический писатель; Художник-дизайнер; Мультимедиа-корреспондент | 7h | 61 |
| 52 | 10.1.24 | Совещание 24 | manual | 1h | 2023-08-09 09:00 | 2023-08-09 10:00 |  |  | Технический писатель; 3D аниматор; Web-дизайнер; Ведущий программист; Системный аналитик; Художник-дизайнер; Мультимедиа-корреспондент | 7h | 61 |
| 53 | 10.1.25 | Совещание 25 | manual | 1h | 2023-08-16 09:00 | 2023-08-16 10:00 |  |  | Художник-дизайнер; Мультимедиа-корреспондент; 3D аниматор; Web-дизайнер; Системный аналитик; Технический писатель; Ведущий программист | 7h | 61 |
| 54 | 10.1.26 | Совещание 26 | manual | 1h | 2023-08-23 09:00 | 2023-08-23 10:00 |  |  | Ведущий программист; Художник-дизайнер; Мультимедиа-корреспондент; Системный аналитик; Технический писатель; Web-дизайнер; 3D аниматор | 7h | 61 |
| 55 | 10.1.27 | Совещание 27 | manual | 1h | 2023-08-30 09:00 | 2023-08-30 10:00 |  |  | Web-дизайнер; 3D аниматор; Ведущий программист; Системный аналитик; Технический писатель; Мультимедиа-корреспондент; Художник-дизайнер | 7h | 61 |
| 56 | 10.1.28 | Совещание 28 | manual | 1h | 2023-09-06 09:00 | 2023-09-06 10:00 |  |  | Web-дизайнер; 3D аниматор; Системный аналитик; Технический писатель; Мультимедиа-корреспондент; Ведущий программист; Художник-дизайнер | 7h | 61 |
| 57 | 10.1.29 | Совещание 29 | manual | 1h | 2023-09-13 09:00 | 2023-09-13 10:00 |  |  | Web-дизайнер; 3D аниматор; Ведущий программист; Мультимедиа-корреспондент; Системный аналитик; Технический писатель; Художник-дизайнер | 7h | 61 |
