# LR4

Schedule from MS Project, 2023-03-01 to 2023-09-01, status date 2023-05-05, costs in ₽, A marks actual dates.
Команда разработчиков из 16 человек занимается созданием карты / города на основе собственного модуля отображения. Проект должен быть завершен в течение / 6 месяцев. Бюджет проекта: 50 000 рубле
Команда разработчиков из 16 человек занимается созданием карты / города на основе собственного модуля отображения. Проект должен быть завершен в течение / 6 месяцев. Бюджет проекта: 50 000 рубле

## Calendars

- Стандартный: Mon-Fri 09:00-13:00, 14:00-18:00; Sat-Sun off.

## Resources

| Resource | Group | Rate | Cost per use |
| --- | --- | --- | --- |
| Ведущий программист | Программирование | 10 | 100 |
| Программист#1 | Программирование | 7 | 50 |
| Программист#2 | Программирование | 7 | 50 |
| Программист#3 | Программирование | 7 | 50 |
| Программист#4 | Программирование | 7 | 50 |
| Системный аналитик | Анализ | 20 | 300 |
| Художник-дизайнер | Дизайн | 8 | 70 |
| Технический писатель | Документация | 5 | 20 |
| Web-дизайнер | Internet | 7 | 50 |
| 3D аниматор | Дизайн | 8 | 70 |
| Мультимедиа-корреспондент | М-медия | 3 | 20 |
| Наборщик данных #1 | Ввод данных | 2 | 10 |
| Наборщик данных #2 | Ввод данных | 2 | 10 |
| Наборщик данных #3 | Ввод данных | 2 | 10 |
| Наборщик данных #4 | Ввод данных | 2 | 10 |
| Наборщик данных #5 | Ввод данных | 2 | 10 |
| Дополнительный сервер |  | 2 |  |
| Программист#5 | Программирование | 7 | 50 |
| Предподаватель ТиСД | Программирование | 20 | 10 |

## Schedule

| ID | WBS | Task | Type | Duration | Start | Finish | Predecessors | Complete | Remaining | Baseline start | Baseline finish | Baseline duration | Total slack | Free slack | Constraint | Resources | Work | Actual work | Cost | Baseline cost | Actual cost |
| --- | --- | --- | --- | --- | --- | --- | --- | --- | --- | --- | --- | --- | --- | --- | --- | --- | --- | --- | --- | --- | --- |
| 1 | 1 | Начало проекта | milestone | 0w | 2023-03-01 09:00 | 2023-03-01 09:00 |  |  |  | 2021-03-01 09:00 | 2021-03-01 09:00 | 0w | 0d |  |  |  |  |  |  |  |  |
| 2 | 2 | **Создание интерфейса** |  | 21.59w | 2023-03-01 09:00 A | 2023-07-28 17:36 | 1 | 17% | 18.01w | 2021-03-01 09:00 | 2021-06-24 15:44 | 15.94w | 0d |  |  |  | 553h | 120h | 5,594 | 5,650 | 1,200 |
| 3 | 2.1 | **Разработка дизайна интерфейса** |  | 13.77w | 2023-03-01 09:00 A | 2023-06-05 16:55 |  | 18% | 11.28w | 2021-03-01 09:00 | 2021-04-06 15:00 | 5.12w | 31.58d | 0d |  |  | 313h | 120h | 2,714 | 2,770 | 1,030 |
| 4 | 2.1.1 | Разработка 2D графических элементов |  | 3w | 2023-03-01 09:00 A | 2023-03-22 12:00 A |  | 100% |  | 2021-03-01 09:00 | 2021-03-23 12:00 | 3w |  |  |  | Художник-дизайнер | 120h | 120h | 1,030 | 1,030 | 1,030 |
| 5 | 2.1.2 | Разработка 3D графических элементов |  | 10.57w | 2023-03-01 09:00 | 2023-05-12 18:00 | 4SS |  |  | 2021-03-01 09:00 | 2021-03-16 11:00 | 2w | 31.58d | 0d | start no earlier than 2023-03-01 09:00 | 3D аниматор | 73h |  | 654 | 710 |  |
| 6 | 2.1.3 | Создание заставки |  | 3w | 2023-05-15 09:00 | 2023-06-05 16:55 | 5 |  |  | 2021-03-16 11:00 | 2021-04-06 15:00 | 3w | 31.58d |  |  | 3D аниматор | 120h |  | 1,030 | 1,030 |  |
| 7 | 2.2 | Программирование интерфейса |  | 1.5w | 2023-07-19 12:36 | 2023-07-28 17:36 | 3, 12 |  |  | 2021-06-15 10:44 | 2021-06-24 15:44 | 1.5w | 0d |  |  | Программист#3; Программист#4; Программист#1; Программист#2 | 240h |  | 1,880 | 1,880 |  |
| 8 | 3 | **Построение базы объектов** |  | 19.34w | 2023-03-01 09:00 A | 2023-07-13 15:26 |  | 29% | 13.78w | 2021-03-23 14:00 | 2021-07-16 15:25 | 16.04w | 35.77d |  |  | Дополнительный сервер | 2765.44h | 365.44h | 9,473.58 | 15,152.85 | 3,912.15 |
| 9 | 3.1 | Анализ и построение структуры базы объектов |  | 1.98w | 2023-03-01 09:00 A | 2023-03-14 17:12 A |  | 100% |  | 2021-03-23 14:00 | 2021-04-06 15:00 | 2w |  |  |  | Системный аналитик; Программист#1 | 79h | 79h | 1,416.5 | 1,900 | 1,416.5 |
| 10 | 3.2 | Программирование средств обработки базы объектов |  | 2.86w | 2023-03-14 17:12 A | 2023-04-04 10:25 A | 9 | 100% |  | 2021-04-07 15:49 | 2021-04-20 15:25 | 1.79w |  |  |  | Программист#3; Программист#4; Программист#1; Программист#2 | 286.44h | 286.44h | 2,205.08 | 1,880 | 2,205.08 |
| 11 | 3.3 | Наполнение базы объектов |  | 12w | 2023-04-20 15:26 | 2023-07-13 15:26 | 10 |  |  | 2021-04-20 15:25 | 2021-07-16 15:25 | 12w | 35.77d |  | start no earlier than 2023-04-20 15:26 | Наборщик данных #1; Наборщик данных #2; Наборщик данных #3; Наборщик данных #4; Наборщик данных #5 | 2400h |  | 4,850 | 4,850 |  |
| 12 | 4 | **Создание ядра GIS** |  | 20.09w | 2023-03-01 09:00 A | 2023-07-19 12:36 |  | 31% | 13.86w | 2021-03-01 09:00 | 2021-06-15 10:44 | 14.44w | 0d |  |  |  | 2869.79h | 862.66h | 24,513.81 | 17,148.62 | 8,590.37 |
| 13 | 4.1 | Анализ и проектирование ядра |  | 1w | 2023-03-01 09:00 A | 2023-03-08 10:00 A |  | 100% |  | 2021-03-01 09:00 | 2021-03-09 10:00 | 1w |  |  |  | Ведущий программист; Системный аналитик; Программист#1; Программист#2; Программист#3; Программист#4 | 240h | 240h | 2,920 | 2,920 | 2,920 |
| 14 | 4.2 | Создание модели ядра |  | 2.02w | 2023-03-08 10:00 A | 2023-03-22 10:49 A | 13 | 100% |  | 2021-03-09 10:00 | 2021-03-23 10:49 | 2.02w |  |  |  | Ведущий программист; Программист#1; Программист#2; Программист#3; Программист#4 | 404.09h | 404.09h | 3,371.1 | 3,336.46 | 3,371.1 |
| 15 | 4.3 | Тестирование модели ядра |  | 0.25w | 2023-05-12 09:00 | 2023-05-15 11:00 | 14 |  |  | 2021-03-23 10:49 | 2021-03-24 12:49 | 0.25w | 4.59d | 0d | start no earlier than 2023-05-12 09:00 | Программист#1; Программист#2; Программист#3; Программист#4 | 40h |  | 480 | 480 |  |
| 16 | 4.4 | Создание рабочей версии ядра |  | 9.44w | 2023-05-15 11:00 A | 2023-07-19 12:36 | 15 | 10% | 8.52w | 2021-03-24 12:49 | 2021-06-15 10:44 | 11.1w | 0d |  |  | Ведущий программист; Программист#1; Программист#2; Программист#3; Программист#4; Программист#5 | 2185.7h | 218.57h | 16,742.71 | 9,412.16 | 1,989.27 |
| 17 | 5 | Создание мультимедиа – наполнения |  | 6w | 2023-06-05 16:55 | 2023-07-19 10:55 | 3 |  |  | 2021-04-06 15:00 | 2021-05-21 11:00 | 6w | 32.21d |  |  | Мультимедиа-корреспондент | 240h |  | 812 | 740 |  |
| 18 | 6 | Создание справочной системы |  | 3.77w | 2023-07-28 17:36 | 2023-08-31 09:11 | 7 |  |  | 2021-07-06 09:44 | 2021-07-20 11:44 | 2w | 1.43d |  | finish no earlier than 2023-07-17 15:12 | Программист#1; Технический писатель | 72.79h |  | 506.13 | 420 |  |
| 19 | 7 | **Создание руководства пользователя** |  | 4.71w | 2023-07-14 17:36 | 2023-08-17 14:12 | 7FS-10d |  |  | 2021-06-09 15:44 | 2021-07-06 09:44 | 3.48w | 0d |  |  |  | 131h |  | 805 | 1,010 |  |
| 20 | 7.1 | Разработка дизайна руководства |  | 0.5w | 2023-07-14 17:36 | 2023-07-19 12:36 |  |  |  | 2021-06-09 15:44 | 2021-06-17 15:44 | 1w | 0d |  |  | Художник-дизайнер | 20h |  | 230 | 390 |  |
| 21 | 7.2 | Написание руководства пользователя |  | 2.77w | 2023-07-18 17:36 | 2023-08-17 14:12 | 20SS+2d |  |  | 2021-06-11 15:44 | 2021-07-06 09:44 | 3w | 0d |  |  | Технический писатель | 111h |  | 575 | 620 |  |
| 22 | 8 | **Создание web – сайта и поддержка** |  | 3.2w | 2023-07-18 17:36 | 2023-08-09 17:36 |  |  |  | 2021-06-11 15:44 | 2021-07-16 11:44 | 4.72w | 0d |  |  |  | 298h |  | 1,988 | 2,106 |  |
| 23 | 8.1 | Разработка структуры сайта |  | 1d | 2023-07-18 17:36 | 2023-07-19 17:36 | 21SS |  |  | 2021-06-11 15:44 | 2021-06-15 15:44 | 1d | 0d |  |  | Web-дизайнер | 8h |  | 106 | 106 |  |
| 24 | 8.2 | Разработка дизайна сайта |  | 1.46w | 2023-07-19 17:36 | 2023-07-31 12:36 | 23 |  |  | 2021-06-15 15:44 | 2021-06-24 17:44 | 1.45w | 0d |  |  | Web-дизайнер; Художник-дизайнер; Технический писатель | 174h |  | 1,300 | 1,110 |  |
| 25 | 8.3 | Наполнение сайта |  | 1.45w | 2023-07-31 12:36 | 2023-08-09 17:36 | 24 |  |  | 2021-06-24 17:44 | 2021-07-16 11:44 | 3w | 0d |  |  | Web-дизайнер; Наборщик данных #1 | 116h |  | 582 | 890 |  |
| 26 | 9 | Тестирование сайта |  | 3.37w | 2023-08-02 17:36 | 2023-09-01 12:37 | 22FS-1w |  |  | 2021-07-09 11:44 | 2021-07-27 14:01 | 2.43w | 0d |  | start no earlier than 2023-07-13 16:12 | Программист#1; Программист#2; Программист#3; Программист#4 | 486.43h |  | 3,604.98 | 3,945.85 |  |
| 27 | 10 | Сдача сайта в эксплуатацию | milestone | 0w | 2023-09-01 12:37 | 2023-09-01 12:37 | 26 |  |  | 2021-07-27 14:01 | 2021-07-27 14:01 | 0w | 0d |  |  |  |  |  |  |  |  |
| 28 | 11 | Повышение квалификации | manual | 4.88d | 2023-04-24 14:07 | 2023-05-05 11:05 |  |  |  |  |  |  |  |  | finish no earlier than 2023-04-21 18:00 | Мультимедиа-корреспондент; Предподаватель ТиСД | 95h |  | 994.8 |  |  |

Notes:
- 5: Пятая задача закончилась на неделю позже даты отсчета.
- 15: Задача началась на неделю позже.

| ID | WBS | Task | Type | Duration | Start | Finish | Total slack | Resources | Work | Cost |
| --- | --- | --- | --- | --- | --- | --- | --- | --- | --- | --- |
| 29 | 12 | **Совещание** |  | 18.02w | 2023-03-22 09:00 | 2023-07-26 10:00 | 0d |  | 38h | -9,247.3 |
| 30 | 12.1 | Совещание 1 | manual | 1h | 2023-03-22 09:00 | 2023-03-22 10:00 |  | 3D аниматор; Ведущий программист; Художник-дизайнер | 3h | -364 |
| 31 | 12.2 | Совещание 2 | manual | 1h | 2023-03-29 09:00 | 2023-03-29 10:00 |  | 3D аниматор | 1h | -552 |
| 32 | 12.3 | Совещание 3 | manual | 1h | 2023-04-05 09:00 | 2023-04-05 10:00 |  | 3D аниматор | 1h | -552 |
| 33 | 12.4 | Совещание 4 | manual | 1h | 2023-04-12 09:00 | 2023-04-12 10:00 |  | 3D аниматор | 1h | -552 |
| 34 | 12.5 | Совещание 5 | manual | 1h | 2023-04-17 09:00 | 2023-04-17 10:00 |  | 3D аниматор | 1h | -552 |
| 35 | 12.6 | Совещание 6 | manual | 1h | 2023-04-26 09:00 | 2023-04-26 10:00 |  | 3D аниматор; Мультимедиа-корреспондент | 2h | -528.7 |
| 36 | 12.7 | Совещание 7 | manual | 1h | 2023-05-03 09:00 | 2023-05-03 10:00 |  | 3D аниматор; Мультимедиа-корреспондент | 2h | -528.7 |
| 37 | 12.8 | Совещание 8 | manual | 1h | 2023-05-10 09:00 | 2023-05-10 10:00 |  | 3D аниматор; Ведущий программист | 2h | -442 |
| 38 | 12.9 | Совещание 9 | manual | 1h | 2023-05-18 17:55 | 2023-05-19 09:55 |  | 3D аниматор; Ведущий программист | 1h | -452 |
| 39 | 12.10 | Совещание 10 | manual | 1h | 2023-05-24 09:00 | 2023-05-24 10:00 |  | 3D аниматор; Ведущий программист | 2h | -442 |
| 40 | 12.11 | Совещание 11 | manual | 1h | 2023-05-31 09:00 | 2023-05-31 10:00 |  | 3D аниматор; Ведущий программист; Мультимедиа-корреспондент | 3h | -418.7 |
| 41 | 12.12 | Совещание 12 | manual | 1h | 2023-06-07 09:00 | 2023-06-07 10:00 |  | Ведущий программист; Мультимедиа-корреспондент | 2h | -496.7 |
| 42 | 12.13 | Совещание 13 | manual | 1h | 2023-06-14 09:00 | 2023-06-14 10:00 |  | Ведущий программист; Мультимедиа-корреспондент | 2h | -496.7 |
| 43 | 12.14 | Совещание 14 | manual | 1h | 2023-06-21 09:00 | 2023-06-21 10:00 |  | Ведущий программист; Мультимедиа-корреспондент | 2h | -496.7 |
| 44 | 12.15 | Совещание 15 | manual | 1h | 2023-06-28 09:00 | 2023-06-28 10:00 |  | Ведущий программист; Мультимедиа-корреспондент | 2h | -496.7 |
| 45 | 12.16 | Совещание 16 | manual | 1h | 2023-07-05 09:00 | 2023-07-05 10:00 |  | Ведущий программист; Мультимедиа-корреспондент | 2h | -496.7 |
| 46 | 12.17 | Совещание 17 | manual | 1h | 2023-07-12 09:00 | 2023-07-12 10:00 |  | Web-дизайнер; Ведущий программист; Мультимедиа-корреспондент; Технический писатель; Художник-дизайнер | 5h | -336.7 |
| 47 | 12.18 | Совещание 18 | manual | 1h | 2023-07-19 17:36 | 2023-07-20 09:36 |  | Web-дизайнер | 1h | -573 |
| 48 | 12.19 | Совещание 19 | manual | 1h | 2023-07-26 09:00 | 2023-07-26 10:00 |  | Web-дизайнер; Технический писатель; Художник-дизайнер | 3h | -470 |
