# LR_4

Schedule from MS Project, 2023-03-01 to 2023-07-31, status date 2023-05-05, costs in ₽, A marks actual dates.
Команда разработчиков из 16 человек занимается созданием карты города на основе собственного модуля отображения. Проект должен быть завершен в течение 6 месяцев. Бюджет проекта: 50 000 рублей.

## Calendars

- Стандартный: Mon-Fri 09:00-13:00, 14:00-18:00; Sat-Sun off. Exceptions (off unless hours are given): 2023-03-08 (8 марта), 2023-04-29 to 2023-05-01 (1 мая), 2023-05-06 to 2023-05-09 (9 мая), 2023-06-10 to 2023-06-12 (день России).

## Resources

| Resource | Group | Rate | Cost per use |
| --- | --- | --- | --- |
| Ведущий программист | Программирование | 10 | 100 |
| Программист#4 | Программирование | 7 | 50 |
| Программист#3 | Программирование | 7 | 50 |
| Программист#2 | Программирование | 7 | 50 |
| Программист#1 | Программирование | 7 | 50 |
| Системный аналитик | Анализ | 20 | 300 |
| Художник-дизайнер | Дизайн | 8 | 70 |
| Технический писатель | Документация | 5 | 20 |
| Web-дизайнер | Internet | 7 | 50 |
| 3Д аниматор | Дизайн | 8 | 70 |
| Мультимедиакорреспондент | М-медиа | 3 | 20 |
| Наборщик данных#5 | Ввод данных | 2 | 10 |
| Наборщик данных#4 | Ввод данных | 2 | 10 |
| Наборщик данных#3 | Ввод данных | 2 | 10 |
| Наборщик данных#2 | Ввод данных | 2 | 10 |
| Наборщик данных#1 | Ввод данных | 2 | 10 |
| Дополнительный сервер | Оборудование | 2 |  |

## Schedule

| ID | WBS | Task | Type | Duration | Start | Finish | Predecessors | Complete | Remaining | Baseline start | Baseline finish | Baseline duration | Total slack | Constraint | Resources | Work | Actual work | Cost | Baseline cost | Actual cost |
| --- | --- | --- | --- | --- | --- | --- | --- | --- | --- | --- | --- | --- | --- | --- | --- | --- | --- | --- | --- | --- |
| 1 | 1 | **Создание интерфейса** |  | 80.47d | 2023-03-01 10:00 A | 2023-06-28 14:44 |  | 75% | 20.02d | 2023-03-01 10:00 | 2023-06-26 15:37 | 78.58d | 0d |  |  | 606h | 320h | 6,018 | 5,650 | 3,520 |
| 2 | 1.1 | **Разработка дизайна интерфейса** |  | 25.5d | 2023-03-01 10:00 A | 2023-04-06 15:00 |  | 87% | 3.21d | 2023-03-01 10:00 | 2023-04-06 15:00 | 25.5d | 0d |  |  | 366h | 320h | 3,138 | 2,770 | 2,770 |
| 3 | 1.1.1 | Разработка 2D графических элементов |  | 3w | 2023-03-01 10:00 A | 2023-03-23 12:00 A |  | 100% |  | 2023-03-01 10:00 | 2023-03-23 12:00 | 3w |  |  | Художник-дизайнер | 120h | 120h | 1,030 | 1,030 | 1,030 |
| 4 | 1.1.2 | Разработка 3D графических элементов | manual | 3.15w | 2023-03-01 10:00 A | 2023-03-23 18:00 | 3SS | 63% | 1.15w | 2023-03-01 10:00 | 2023-03-16 11:00 | 2w |  | finish no earlier than 2023-03-23 18:00 | 3Д аниматор | 126h | 80h | 1,078 | 710 | 710 |
| 5 | 1.1.3 | Создание заставки |  | 3w | 2023-03-16 11:00 A | 2023-04-06 15:00 A | 4 | 100% |  | 2023-03-16 11:00 | 2023-04-06 15:00 | 3w |  |  | 3Д аниматор | 120h | 120h | 1,030 | 1,030 | 1,030 |
| 6 | 1.2 | Программирование интерфейса |  | 1.5w | 2023-06-19 09:44 | 2023-06-28 14:44 | 2, 11 |  |  | 2023-06-15 10:37 | 2023-06-26 15:37 | 1.5w | 0d |  | Программист#3; Программист#4; Программист#1; Программист#2 | 240h |  | 1,880 | 1,880 |  |
| 7 | 2 | **Построение базы объектов** |  | 93.64d | 2023-03-01 09:00 A | 2023-07-17 15:09 |  | 38% | 57.72d | 2023-03-01 09:00 | 2023-07-17 15:09 | 93.64d | 9.83d |  | Дополнительный сервер | 6038.15h | 2087.12h | 15,672.97 | 15,672.97 | 7,150.91 |
| 8 | 2.1 | Анализ и построение структуры базы объектов |  | 1.36w | 2023-03-01 09:00 A | 2023-03-21 12:40 A |  | 100% |  | 2023-03-01 09:00 | 2023-03-21 12:40 | 1.36w |  |  | Системный аналитик; Программист#1; Программист#2 | 80h | 80h | 1,306.67 | 1,306.67 | 1,306.67 |
| 9 | 2.2 | Программирование средств обработки базы объектов |  | 2.1w | 2023-03-21 12:40 A | 2023-04-18 15:09 A | 8 | 100% |  | 2023-03-21 12:40 | 2023-04-18 15:09 | 2.1w |  |  | Программист#3; Программист#4; Программист#1; Программист#2 | 240h | 240h | 1,880 | 1,880 | 1,880 |
| 10 | 2.3 | Наполнение базы объектов |  | 12w | 2023-04-18 15:09 A | 2023-07-17 15:09 | 9 | 21% | 9.53w | 2023-04-18 15:09 | 2023-07-17 15:09 | 12w | 9.83d |  | Наборщик данных#1; Наборщик данных#2; Наборщик данных#3; Наборщик данных#4; Наборщик данных#5 | 2400h | 494.24h | 4,850 | 4,850 | 1,038.48 |
| 11 | 3 | **Создание ядра GIS** |  | 73.09d | 2023-03-01 09:00 A | 2023-06-19 09:44 |  | 53% | 34.14d | 2023-03-01 09:00 | 2023-06-15 10:37 | 71.2d | 0d |  |  | 1880h | 801.19h | 17,538.62 | 17,538.62 | 8,875.12 |
| 12 | 3.1 | Анализ и проектирование ядра |  | 2.08w | 2023-03-01 09:00 A | 2023-03-21 14:40 A |  | 100% |  | 2023-03-01 09:00 | 2023-03-21 14:40 | 2.08w |  |  | Ведущий программист; Системный аналитик; Программист#1 | 240h | 240h | 3,410 | 3,410 | 3,410 |
| 13 | 3.2 | Создание модели ядра |  | 2.59w | 2023-03-21 14:40 A | 2023-04-07 14:09 A | 12 | 100% |  | 2023-03-21 14:40 | 2023-04-07 14:09 | 2.59w |  |  | Ведущий программист; Программист#1; Программист#2; Программист#3; Программист#4 | 400h | 400h | 3,336.46 | 3,336.46 | 3,336.46 |
| 14 | 3.3 | Тестирование модели ядра | manual | 1w | 2023-04-21 09:00 A | 2023-05-05 14:47 A | 13 | 100% |  | 2023-04-14 09:27 | 2023-04-27 15:14 | 1w |  |  | Программист#1; Программист#2 | 40h | 40h | 380 | 380 | 380 |
| 15 | 3.4 | Создание рабочей версии ядра | manual | 6.11w | 2023-04-27 15:14 A | 2023-06-19 09:44 | 14 | 10% | 5.5w | 2023-04-27 15:14 | 2023-06-15 10:37 | 6.11w |  |  | Ведущий программист; Программист#1; Программист#2; Программист#3; Программист#4 | 1200h | 121.19h | 9,412.16 | 9,412.16 | 1,218.66 |
| 16 | 4 | Создание мультимедиа – наполнения |  | 6w | 2023-04-06 15:00 A | 2023-05-24 12:00 | 2 | 66% | 2.02w | 2023-04-06 15:00 | 2023-05-24 12:00 | 6w | 47.1d |  | Мультимедиакорреспондент | 240h | 159h | 785.3 | 740 | 518 |
| 17 | 5 | Создание справочной системы |  | 2w | 2023-07-10 09:00 | 2023-07-24 11:00 | 6 |  |  | 2023-07-06 09:37 | 2023-07-20 11:37 | 2w | 5.22d |  | Технический писатель | 80h |  | 420 | 420 |  |
| 18 | 6 | **Создание руководства пользователя** |  | 17.38d | 2023-06-14 14:44 | 2023-07-07 17:44 | 6FS-10d |  |  | 2023-06-09 15:37 | 2023-07-06 09:37 | 17.38d | 0d |  |  | 160h |  | 1,010 | 1,010 |  |
| 19 | 6.1 | Разработка дизайна руководства |  | 1w | 2023-06-14 14:44 | 2023-06-21 15:44 |  |  |  | 2023-06-09 15:37 | 2023-06-19 16:37 | 1w | 0d |  | Художник-дизайнер | 40h |  | 390 | 390 |  |
| 20 | 6.2 | Написание руководства пользователя |  | 3w | 2023-06-16 14:44 | 2023-07-07 17:44 | 19SS+2d |  |  | 2023-06-14 15:37 | 2023-07-06 09:37 | 3w | 0d |  | Технический писатель | 120h |  | 620 | 620 |  |
| 21 | 7 | **Создание web – сайта и поддержка** |  | 23.62d | 2023-06-16 14:44 | 2023-07-20 10:44 |  |  |  | 2023-06-14 15:37 | 2023-07-18 11:37 | 23.62d | 0d |  |  | 248h |  | 2,106 | 2,106 |  |
| 22 | 7.1 | Разработка структуры сайта |  | 1d | 2023-06-16 14:44 | 2023-06-19 14:44 | 20SS |  |  | 2023-06-14 15:37 | 2023-06-15 15:37 | 1d | 0d |  | Web-дизайнер | 8h |  | 106 | 106 |  |
| 23 | 7.2 | Разработка дизайна сайта |  | 1.43w | 2023-06-19 14:44 | 2023-06-28 16:44 | 22 |  |  | 2023-06-15 15:37 | 2023-06-26 17:37 | 1.43w | 0d |  | Web-дизайнер; Художник-дизайнер; 3Д аниматор | 120h |  | 1,110 | 1,110 |  |
| 24 | 7.3 | Наполнение сайта |  | 3w | 2023-06-28 16:44 | 2023-07-20 10:44 | 23 |  |  | 2023-06-26 17:37 | 2023-07-18 11:37 | 3w | 0d |  | Web-дизайнер | 120h |  | 890 | 890 |  |
| 25 | 8 | Тестирование сайта |  | 2.45w | 2023-07-13 10:44 | 2023-07-31 12:47 | 21FS-1w |  |  | 2023-07-11 11:37 | 2023-07-27 14:40 | 2.45w | 0d |  | Ведущий программист; Программист#1; Программист#2; Программист#3; Программист#4 | 480h |  | 3,945.15 | 3,945.15 |  |
| 26 | 9 | Сдача сайта в эксплуатацию | milestone | 0w | 2023-07-31 12:47 | 2023-07-31 12:47 | 25 |  |  | 2023-07-27 14:40 | 2023-07-27 14:40 | 0w | 0d |  |  |  |  |  |  |  |

| ID | WBS | Task | Type | Duration | Start | Finish | Complete | Remaining | Baseline start | Baseline finish | Baseline duration | Total slack | Constraint | Resources | Work | Actual work | Cost | Baseline cost | Actual cost |
| --- | --- | --- | --- | --- | --- | --- | --- | --- | --- | --- | --- | --- | --- | --- | --- | --- | --- | --- | --- |
| 30 | 10 | **Совещание** |  | 100.12d | 2023-03-01 09:00 A | 2023-07-26 10:00 | 45% | 54.61d | 2023-03-01 09:00 | 2023-07-26 10:00 | 100.12d | 0d |  |  | 89h | 60h | 725 | 1,342 | 514 |
| 31 | 10.1 | Совещание 1 | manual | 1h | 2023-03-01 09:00 A | 2023-03-01 10:00 A | 100% |  | 2023-03-01 09:00 | 2023-03-01 10:00 | 1h |  | start no earlier than 2023-03-01 09:00 | 3Д аниматор; Web-дизайнер; Ведущий программист; Мультимедиакорреспондент; Системный аналитик; Технический писатель; Художник-дизайнер | 7h | 7h | 61 | 61 | 61 |
| 32 | 10.2 | Совещание 2 | manual | 1h | 2023-03-08 09:00 A | 2023-03-08 10:00 A | 100% |  | 2023-03-08 09:00 | 2023-03-08 10:00 | 1h |  | start no earlier than 2023-03-08 09:00 | 3Д аниматор; Web-дизайнер; Ведущий программист; Мультимедиакорреспондент; Системный аналитик; Технический писатель; Художник-дизайнер | 7h | 7h | 61 | 61 | 61 |
| 33 | 10.3 | Совещание 3 | manual | 1h | 2023-03-15 09:00 A | 2023-03-15 10:00 A | 100% |  | 2023-03-15 09:00 | 2023-03-15 10:00 | 1h |  | start no earlier than 2023-03-15 09:00 | 3Д аниматор; Web-дизайнер; Ведущий программист; Мультимедиакорреспондент; Системный аналитик; Технический писатель; Художник-дизайнер | 7h | 7h | 61 | 61 | 61 |
| 34 | 10.4 | Совещание 4 | manual | 1h | 2023-03-22 09:00 A | 2023-03-22 10:00 A | 100% |  | 2023-03-22 09:00 | 2023-03-22 10:00 | 1h |  | start no earlier than 2023-03-22 09:00 | 3Д аниматор; Web-дизайнер; Ведущий программист; Мультимедиакорреспондент; Системный аналитик; Технический писатель; Художник-дизайнер | 7h | 7h | 61 | 61 | 61 |
| 35 | 10.5 | Совещание 5 | manual | 1h | 2023-03-29 09:00 A | 2023-03-29 10:00 A | 100% |  | 2023-03-29 09:00 | 2023-03-29 10:00 | 1h |  | start no earlier than 2023-03-29 09:00 | 3Д аниматор; Web-дизайнер; Ведущий программист; Мультимедиакорреспондент; Системный аналитик; Технический писатель; Художник-дизайнер | 7h | 7h | 61 | 61 | 61 |
| 36 | 10.6 | Совещание 6 | manual | 1h | 2023-04-05 09:00 A | 2023-04-05 10:00 A | 100% |  | 2023-04-05 09:00 | 2023-04-05 10:00 | 1h |  | start no earlier than 2023-04-05 09:00 | 3Д аниматор; Web-дизайнер; Ведущий программист; Мультимедиакорреспондент; Системный аналитик; Технический писатель; Художник-дизайнер | 7h | 7h | 61 | 61 | 61 |
| 37 | 10.7 | Совещание 7 | manual | 1h | 2023-04-12 09:00 A | 2023-04-12 10:00 A | 100% |  | 2023-04-12 09:00 | 2023-04-12 10:00 | 1h |  | start no earlier than 2023-04-12 09:00 | 3Д аниматор; Web-дизайнер; Ведущий программист; Мультимедиакорреспондент; Системный аналитик; Технический писатель; Художник-дизайнер | 7h | 7h | 61 | 61 | 61 |
| 38 | 10.8 | Совещание 8 | manual | 1h | 2023-04-19 09:00 A | 2023-04-19 10:00 A | 100% |  | 2023-04-19 09:00 | 2023-04-19 10:00 | 1h |  | start no earlier than 2023-04-19 09:00 | 3Д аниматор; Web-дизайнер; Ведущий программист; Мультимедиакорреспондент; Системный аналитик; Технический писатель; Художник-дизайнер | 7h | 7h | 61 | 61 | 61 |
| 39 | 10.9 | Совещание 9 | manual | 1h | 2023-04-26 09:00 A | 2023-04-26 10:00 A | 100% |  | 2023-04-26 09:00 | 2023-04-26 10:00 | 1h |  | start no earlier than 2023-04-26 09:00 | Ведущий программист; Мультимедиакорреспондент | 2h | 2h | 13 | 61 | 13 |
| 40 | 10.10 | Совещание 10 | manual | 1h | 2023-05-03 09:00 A | 2023-05-03 10:00 A | 100% |  | 2023-05-03 09:00 | 2023-05-03 10:00 | 1h |  | start no earlier than 2023-05-03 09:00 | Ведущий программист; Мультимедиакорреспондент | 2h | 2h | 13 | 61 | 13 |
| 41 | 10.11 | Совещание 11 | manual | 1h | 2023-05-10 09:00 | 2023-05-10 10:00 |  |  | 2023-05-10 09:00 | 2023-05-10 10:00 | 1h |  | start no earlier than 2023-05-10 09:00 | Ведущий программист; Мультимедиакорреспондент | 2h |  | 13 | 61 |  |
| 42 | 10.12 | Совещание 12 | manual | 1h | 2023-05-17 09:00 | 2023-05-17 10:00 |  |  | 2023-05-17 09:00 | 2023-05-17 10:00 | 1h |  | start no earlier than 2023-05-17 09:00 | Ведущий программист; Мультимедиакорреспондент | 2h |  | 13 | 61 |  |
| 43 | 10.13 | Совещание 13 | manual | 1h | 2023-05-24 09:00 | 2023-05-24 10:00 |  |  | 2023-05-24 09:00 | 2023-05-24 10:00 | 1h |  | start no earlier than 2023-05-24 09:00 | Ведущий программист; Мультимедиакорреспондент | 2h |  | 13 | 61 |  |
| 44 | 10.14 | Совещание 14 | manual | 1h | 2023-05-31 09:00 | 2023-05-31 10:00 |  |  | 2023-05-31 09:00 | 2023-05-31 10:00 | 1h |  | start no earlier than 2023-05-31 09:00 | Ведущий программист | 1h |  | 10 | 61 |  |
| 45 | 10.15 | Совещание 15 | manual | 1h | 2023-06-07 09:00 | 2023-06-07 10:00 |  |  | 2023-06-07 09:00 | 2023-06-07 10:00 | 1h |  | start no earlier than 2023-06-07 09:00 | Ведущий программист | 1h |  | 10 | 61 |  |
| 46 | 10.16 | Совещание 16 | manual | 1h | 2023-06-14 09:00 | 2023-06-14 10:00 |  |  | 2023-06-14 09:00 | 2023-06-14 10:00 | 1h |  | start no earlier than 2023-06-14 09:00 | 3Д аниматор; Web-дизайнер; Ведущий программист; Технический писатель; Художник-дизайнер | 5h |  | 38 | 61 |  |
| 47 | 10.17 | Совещание 17 | manual | 1h | 2023-06-21 09:00 | 2023-06-21 10:00 |  |  | 2023-06-21 09:00 | 2023-06-21 10:00 | 1h |  | start no earlier than 2023-06-21 09:00 | 3Д аниматор; Web-дизайнер; Технический писатель; Художник-дизайнер | 4h |  | 28 | 61 |  |
| 48 | 10.18 | Совещание 18 | manual | 1h | 2023-06-28 09:00 | 2023-06-28 10:00 |  |  | 2023-06-28 09:00 | 2023-06-28 10:00 | 1h |  | start no earlier than 2023-06-28 09:00 | Web-дизайнер; Технический писатель; Художник-дизайнер | 3h |  | 20 | 61 |  |
| 49 | 10.19 | Совещание 19 | manual | 1h | 2023-07-05 09:00 | 2023-07-05 10:00 |  |  | 2023-07-05 09:00 | 2023-07-05 10:00 | 1h |  | start no earlier than 2023-07-05 09:00 | Web-дизайнер; Технический писатель | 2h |  | 12 | 61 |  |
| 50 | 10.20 | Совещание 20 | manual | 1h | 2023-07-12 09:00 | 2023-07-12 10:00 |  |  | 2023-07-12 09:00 | 2023-07-12 10:00 | 1h |  | start no earlier than 2023-07-12 09:00 | Web-дизайнер; Ведущий программист; Технический писатель | 3h |  | 22 | 61 |  |
| 51 | 10.21 | Совещание 21 | manual | 1h | 2023-07-19 09:00 | 2023-07-19 10:00 |  |  | 2023-07-19 09:00 | 2023-07-19 10:00 | 1h |  | start no earlier than 2023-07-19 09:00 | Web-дизайнер; Ведущий программист; Технический писатель | 3h |  | 22 | 61 |  |
| 52 | 10.22 | Совещание 22 | manual | 1h | 2023-07-26 09:00 | 2023-07-26 10:00 |  |  | 2023-07-26 09:00 | 2023-07-26 10:00 | 1h |  | start no earlier than 2023-07-26 09:00 | Ведущий программист | 1h |  | 10 | 61 |  |
